Schedule from OmniPlan.
Project start 2015-11-04

## Resources

| Resource | Group |
| --- | --- |
| Resource 1 | staff |
| Equipment 1 | equipment |
| Material 1 | material |
| Group 1 | group |
| 黄玉辉 | staff |
| 陈新存 | staff |
| 刘云鹏 | staff |
| 林思敏 | staff |

## Schedule

| ID | WBS | Task | Predecessors | Complete | Constraint | Resources | Work | Actual work |
| --- | --- | --- | --- | --- | --- | --- | --- | --- |
| 1 | 1 | **并读新闻 iOS 1.5.1 开发计划** |  |  |  |  |  |  |
| 2 | 1.1 | **图评** |  |  |  |  |  |  |
| 3 | 1.1.1 | 增加系统设置开关 |  | 100% | start no earlier than 2015-11-06 | 刘云鹏 | 3.75h | 3.75h |
| 4 | 1.1.2 | 修改大图图评交互 | 3 | 100% |  | 刘云鹏 | 3.75h | 3.75h |
| 5 | 1.1.3 | 修改图评背景颜色 | 4 | 100% |  | 刘云鹏 | 3.75h | 3.75h |
| 6 | 1.1.4 | 增加图评自动刷新 | 5 | 100% |  | 刘云鹏 | 15h | 15h |
| 7 | 1.2 | **直播** |  |  |  |  |  |  |
| 8 | 1.2.1 | 修改弹幕流显示的弹幕数量 |  | 100% | start no earlier than 2015-11-06 | 陈新存 | 7.5h | 7.5h |
| 9 | 1.2.2 | 修改弹幕头像尺寸 | 8 |  |  | 陈新存 |  | 0h |
| 10 | 1.2.3 | 解决新评论没有插入弹幕流的问题 | 9 | 100% |  | 陈新存 | 3.75h | 3.75h |
| 11 | 1.2.4 | 修改弹幕打开和收起的交互动作 | 10 | 100% | start no earlier than 2015-11-05 | 陈新存 | 15h | 15h |
| 12 | 1.3 | **首页** |  |  |  |  |  |  |
| 13 | 1.3.1 | 修改新闻列表分隔线 |  | 100% | start no earlier than 2015-11-06 | 黄玉辉 | 7.5h | 7.5h |
| 14 | 1.3.2 | 修改新闻列表刷新机制 | 23 | 100% |  | 黄玉辉 | 22.5h | 22.5h |
| 15 | 1.4 | **广告** |  |  |  |  |  |  |
| 16 | 1.4.1 | 增加互锋广告SDK | 14 | 100% |  | 黄玉辉 | 37.5h | 37.5h |
| 17 | 1.5 | **新闻详情** |  |  |  |  |  |  |
| 18 | 1.5.1 | 修改评论输入控件 | 6 | 100% |  | 刘云鹏 | 7.5h | 7.5h |
| 19 | 1.5.2 | 解决正文与并友热读、并友热议灰色分隔区消失的问题 | 18 | 100% |  | 刘云鹏 | 7.5h | 7.5h |
| 20 | 1.6 | **新闻收藏** |  |  |  |  |  |  |
| 21 | 1.6.1 | 修改收藏列表删除交互 |  | 100% | start no earlier than 2015-11-06 | 林思敏 | 37.5h | 37.5h |
| 22 | 1.7 | **公共模块** |  |  |  |  |  |  |
| 23 | 1.7.1 | 修改加载动画 | 13 | 100% |  | 黄玉辉 | 7.5h | 7.5h |
| 24 | 1.7.2 | **友盟事件统计** |  |  | start no earlier than 2015-11-11 |  |  |  |
| 25 | 1.7.2.1 | 黄玉辉 | 16 | 100% | start no earlier than 2015-11-11 | 黄玉辉 | 15h | 15h |
| 26 | 1.7.2.2 | 林思敏 | 21 | 100% | start no earlier than 2015-11-11 | 林思敏 | 7.5h | 7.5h |
| 27 | 1.7.2.3 | 刘云鹏 | 19 |  | start no earlier than 2015-11-11 | 刘云鹏 | 7.5h |  |
| 28 | 1.7.2.4 | 陈新存 | 11 |  | start no earlier than 2015-11-13 | 陈新存 | 7.5h |  |

Notes:
- 25: 新闻列表页 / 通讯录并友页 / 抢钱页 / 小积分赢大奖页 / 积分规则页
- 26: 收藏夹页 / 选择提现方式页 / 提现申请成功页 / 提现详情页
- 27: 新闻详情页 / 并友页 / 奖品详情页 / 中奖名单页
- 28: 新闻直播页 / 新闻专题页 / 新闻搜索页 / 搜索结果页 / 礼品兑换页 / 兑换成功页 / 商品详情页 / 兑换记录页 / 奖券详情页 / 兑换详情页 / 我页 / 系统设置页 / 登录页
