Schedule from OmniPlan.
Project start 2015-11-04

## Resources

| Resource | Group |
| --- | --- |
| Resource 1 | staff |
| Equipment 1 | equipment |
| Material 1 | material |
| Group 1 | group |
| 黄玉辉 | staff |
| 陈新存 | staff |
| 刘云鹏 | staff |
| 林思敏 | staff |

## Schedule

| ID | WBS | Task | Predecessors | Complete | Constraint | Resources | Work | Actual work |
| --- | --- | --- | --- | --- | --- | --- | --- | --- |
| 1 | 1 | **并读新闻 iOS 2.0.0 开发计划** |  |  |  |  |  |  |
| 2 | 1.1 | **UI框架搭建** |  |  | start no earlier than 2015-12-10 |  |  |  |
| 3 | 1.1.1 | **生活方式与个人中心** |  |  | start no earlier than 2015-12-14 |  |  |  |
| 4 | 1.1.1.1 | UIUX |  | 100% | start no earlier than 2015-12-10 | 黄玉辉 | 15h | 15h |
| 5 | 1.1.1.2 | 业务逻辑 | 4 | 100% | start no earlier than 2015-12-10 | 黄玉辉 | 22.5h | 22.5h |
| 6 | 1.1.1.3 | 测试周期 | 5 | 100% | start no earlier than 2015-12-10 | 黄玉辉 | 15h | 15h |
| 7 | 1.2 | **新闻收藏** |  |  | start no earlier than 2015-12-14 |  |  |  |
| 8 | 1.2.1 | UIUX |  | 100% | start no earlier than 2015-12-10 | 林思敏 | 7.5h | 7.5h |
| 9 | 1.2.2 | 测试周期 | 8 | 100% | start no earlier than 2015-12-10 | 林思敏 | 7.5h | 7.5h |
| 10 | 1.3 | **系统设置** |  |  |  |  |  |  |
| 11 | 1.3.1 | UIUX |  | 100% | start no earlier than 2015-12-14 | 陈新存 | 7.5h | 7.5h |
| 12 | 1.3.2 | 测试周期 | 11 |  | start no earlier than 2015-12-10 | 陈新存 |  | 0h |
| 13 | 1.4 | **直播新闻推送优化** | 10 |  | start no earlier than 2015-12-10 |  |  |  |
| 14 | 1.4.1 | UIUX |  | 100% | start no earlier than 2015-12-10 | 陈新存 | 3.75h | 3.75h |
| 15 | 1.4.2 | 测试周期 | 14 |  | start no earlier than 2015-12-10 | 陈新存 |  | 0h |
| 16 | 1.5 | **并友** |  |  |  |  |  |  |
| 17 | 1.5.1 | **并友** |  |  | start no earlier than 2015-12-10 |  |  |  |
| 18 | 1.5.1.1 | UIUX |  | 100% | start no earlier than 2015-12-14 | 刘云鹏 | 15h | 15h |
| 19 | 1.5.1.2 | 测试周期 | 18 |  | start no earlier than 2015-12-10 | 刘云鹏 |  | 0h |
| 20 | 1.5.2 | **通讯录** | 7 |  | start no earlier than 2015-12-10 |  |  |  |
| 21 | 1.5.2.1 | UIUX |  | 100% | start no earlier than 2015-12-10 | 林思敏 | 7.5h | 7.5h |
| 22 | 1.5.2.2 | 测试周期 | 21 | 100% | start no earlier than 2015-12-10 | 林思敏 | 7.5h | 7.5h |
| 23 | 1.6 | **集市** | 20 |  |  |  |  |  |
| 24 | 1.6.1 | UIUX |  | 100% | start no earlier than 2015-12-10 | 林思敏 | 7.5h | 7.5h |
| 25 | 1.6.2 | 测试周期 | 24 | 100% | start no earlier than 2015-12-10 | 林思敏 | 7.5h | 7.5h |

| ID | WBS | Task | Predecessors | Complete | Constraint | Resources | Work | Actual work |
| --- | --- | --- | --- | --- | --- | --- | --- | --- |
| 26 | 1.7 | **文章详情** |  |  |  |  |  |  |
| 27 | 1.7.1 | **生活方式** | 17 |  | start no earlier than 2015-12-10 |  |  |  |
| 28 | 1.7.1.1 | UIUX |  | 100% | start no earlier than 2015-12-10 | 刘云鹏 | 7.5h | 7.5h |
| 29 | 1.7.1.2 | 业务逻辑 | 28 | 100% | start no earlier than 2015-12-10 | 刘云鹏 | 7.5h | 7.5h |
| 30 | 1.7.1.3 | 测试周期 | 29 | 100% | start no earlier than 2015-12-10 | 刘云鹏 | 7.5h | 7.5h |
| 31 | 1.7.2 | **即时新闻** | 27 |  | start no earlier than 2015-12-10 |  |  |  |
| 32 | 1.7.2.1 | UIUX |  | 100% | start no earlier than 2015-12-10 | 刘云鹏 | 7.5h | 7.5h |
| 33 | 1.7.2.2 | 业务逻辑 | 32 | 100% | start no earlier than 2015-12-10 | 刘云鹏 | 15h | 15h |
| 34 | 1.7.2.3 | 测试周期 | 33 | 100% | start no earlier than 2015-12-10 | 刘云鹏 | 7.5h | 7.5h |
| 35 | 1.8 | **百科词条** | 31 |  | start no earlier than 2015-12-10 |  |  |  |
| 36 | 1.8.1 | UIUX |  | 100% | start no earlier than 2015-12-10 | 刘云鹏 | 7.5h | 7.5h |
| 37 | 1.8.2 | 接口调试 | 36 | 100% | start no earlier than 2015-12-10 | 刘云鹏 | 7.5h | 7.5h |
| 38 | 1.8.3 | 业务逻辑 | 37 | 100% | start no earlier than 2015-12-10 | 刘云鹏 | 18.75h | 18.75h |
| 39 | 1.8.4 | 测试周期 | 38 |  | start no earlier than 2015-12-10 | 刘云鹏 |  | 0h |
| 40 | 1.9 | **生活方式** |  |  | start no earlier than 2015-12-10 |  |  |  |
| 41 | 1.9.1 | **精选文章列表** | 3 |  | start no earlier than 2015-12-10 |  |  |  |
| 42 | 1.9.1.1 | UIUX |  | 100% | start no earlier than 2015-12-10 | 黄玉辉 | 15h | 15h |
| 43 | 1.9.1.2 | 接口调试与业务逻辑 | 42 | 80% | start no earlier than 2015-12-10 | 黄玉辉 | 22.5h | 18h |
| 44 | 1.9.1.3 | 测试周期 | 43 |  | start no earlier than 2015-12-10 | 黄玉辉 | 15h |  |
| 45 | 1.9.2 | **频道分类列表** | 13 |  | start no earlier than 2015-12-10 |  |  |  |
| 46 | 1.9.2.1 | UIUX |  | 100% | start no earlier than 2015-12-10 | 陈新存 | 7.5h | 7.5h |
| 47 | 1.9.2.2 | 接口调试 | 46 | 100% | start no earlier than 2015-12-10 | 陈新存 | 3.75h | 3.75h |
| 48 | 1.9.2.3 | 业务逻辑 | 47 | 100% | start no earlier than 2015-12-10 | 陈新存 | 7.5h | 7.5h |
| 49 | 1.9.2.4 | 测试周期 | 48 | 100% | start no earlier than 2015-12-10 | 陈新存 | 3.75h | 3.75h |

| ID | WBS | Task | Predecessors | Complete | Constraint | Resources | Work | Actual work |
| --- | --- | --- | --- | --- | --- | --- | --- | --- |
| 50 | 1.9.3 | **分类文章列表** | 23 |  | start no earlier than 2015-12-10 |  |  |  |
| 51 | 1.9.3.1 | UIUX |  | 100% | start no earlier than 2015-12-10 | 林思敏 | 15h | 15h |
| 52 | 1.9.3.2 | 接口调试 | 51 | 100% | start no earlier than 2015-12-10 | 林思敏 | 15h | 15h |
| 53 | 1.9.3.3 | 业务逻辑 | 52 | 100% | start no earlier than 2015-12-10 | 林思敏 | 15h | 15h |
| 54 | 1.9.3.4 | 测试周期 | 53 | 100% | start no earlier than 2015-12-10 | 林思敏 | 15h | 15h |
| 55 | 1.10 | **任务** | 45 |  |  |  |  |  |
| 56 | 1.10.1 | UIUX |  | 100% | start no earlier than 2015-12-10 | 陈新存 | 15h | 15h |
| 57 | 1.10.2 | 接口调试 | 56 | 100% | start no earlier than 2015-12-10 | 陈新存 | 7.5h | 7.5h |
| 58 | 1.10.3 | 业务逻辑 | 57 | 100% | start no earlier than 2015-12-10 | 陈新存 | 15h | 15h |
| 59 | 1.10.4 | 测试周期 | 58 |  | start no earlier than 2015-12-10 | 陈新存 |  | 0h |
| 60 | 1.11 | **新的启动引导页** | 55 |  | start no earlier than 2015-12-10 |  |  |  |
| 61 | 1.11.1 | 测试周期 | 62 |  | start no earlier than 2015-12-10 | 陈新存 |  | 0h |
| 62 | 1.11.2 | UIUX、接口调试与业务逻辑 |  | 100% | start no earlier than 2015-12-10 | 陈新存 | 15h | 15h |
| 63 | 1.12 | **新浪微博SDK更新** | 60 |  | start no earlier than 2015-12-10 |  |  |  |
| 64 | 1.12.1 | UIUX |  | 100% | start no earlier than 2015-12-10 | 陈新存 | 15h | 15h |
| 65 | 1.12.2 | 测试周期 | 64 | 100% | start no earlier than 2015-12-10 | 陈新存 | 3.75h | 3.75h |
| 66 | 1.13 | **新浪微博分享变更** | 35 |  | start no earlier than 2015-12-10 |  |  |  |
| 67 | 1.13.1 | 接口调试 |  | 100% | start no earlier than 2015-12-10 | 刘云鹏 | 3.75h | 3.75h |
| 68 | 1.13.2 | 测试周期 | 67 |  | start no earlier than 2015-12-10 | 刘云鹏 |  | 0h |
| 69 | 1.14 | **统一内部浏览器样式** |  |  | start no earlier than 2015-12-25 |  |  |  |
| 70 | 1.14.1 | 活动界面 | 44 | 100% | start no earlier than 2015-12-25 | 黄玉辉 | 7.5h | 7.5h |
| 71 | 1.14.2 | 原文界面 | 68 | 100% | start no earlier than 2015-12-25 | 刘云鹏 | 7.5h | 7.5h |
| 72 | 1.14.3 | 广告界面 | 65 | 100% | start no earlier than 2015-12-25 | 陈新存 | 7.5h | 7.5h |
